How a schedule from MS Project changed from version to version. A marks actual dates.

## Version 1 (saved 2018-05-14, file Segundo Boletin CC.mpp)

| ID | WBS | Task | Duration | Start | Finish | Predecessors | Total float |
| --- | --- | --- | --- | --- | --- | --- | --- |
| 1 | 0 | **WBS Element** | 270.93d | 2019-01-01 | 2020-01-14 |  | 0d |
| 2 | 1 | **Proyecto** | 270.93d | 2019-01-01 | 2020-01-14 |  | 0d |
| 3 | 1.1 | **Fase de Análisis 15%** | 52.18d | 2019-01-01 | 2019-03-14 |  | 0d |
| 4 | 1.1.1 | **Elicitación 30%** | 21d | 2019-01-01 | 2019-01-29 |  | 0d |
| 5 |  | Inputs cliente/usuarios 10% | 15.75h | 2019-01-01 | 2019-01-03 |  | 0d |
| 6 |  | Observación sistema actual 20% | 31.5h | 2019-01-03 | 2019-01-09 | 5 | 0d |
| 7 |  | Resumen actas reuniones y dossier de observaciones | 0h | 2019-01-09 | 2019-01-09 | 6 | 273.38d |
| 8 |  | Negociación 30% | 47.25h | 2019-01-09 | 2019-01-17 | 6 | 0d |
| 9 |  | Documento de visión | 0h | 2019-01-17 | 2019-01-17 | 8 | 267.08d |
| 10 |  | Determinación de RF y RNF 30% | 47.25h | 2019-01-17 | 2019-01-25 | 8 | 0d |
| 11 |  | Documento de alcance | 0h | 2019-01-25 | 2019-01-25 | 10 | 260.78d |
| 12 |  | Priorización de objetivos 10% | 15.75h | 2019-01-25 | 2019-01-29 | 10 | 0d |
| 13 |  | Lista priorizada de R | 0h | 2019-01-29 | 2019-01-29 | 12 | 253.43d |
| 14 | 1.1.2 | **Análisis 40%** | 19.6d | 2019-01-30 | 2019-02-26 |  | 0d |
| 15 |  | Identificación RF y RNF 40% | 84h | 2019-01-30 | 2019-02-14 | 12 | 0d |
| 16 |  | Priorización RF 15% | 31.5h | 2019-02-14 | 2019-02-20 | 15 | 243.28d |
| 17 |  | Análisis arquitectura 15% | 31.5h | 2019-02-08 | 2019-02-14 | 15FF | 0d |
| 18 |  | Realización de diagramas 30% | 63h | 2019-02-14 | 2019-02-26 | 17 | 0d |
| 19 |  | Modelos y diagramas de análisis | 0h | 2019-02-26 | 2019-02-26 | 18 | 233.83d |
| 20 | 1.1.3 | **Validación 30%** | 11.58d | 2019-02-26 | 2019-03-14 |  | 0d |
| 21 |  | Definición de la validación RF 30% | 47.45h | 2019-02-26 | 2019-03-06 | 18 | 0d |
| 22 |  | Definición de la integración 10% | 15.75h | 2019-03-06 | 2019-03-11 | 21 | 222.25d |
| 23 |  | Definición de medidas de aseguramiento de la calidad 15% | 23.63h | 2019-02-26 | 2019-03-01 | 21SS | 224.93d |
| 24 |  | Definición de la validación de la arquitectura 15% | 23.63h | 2019-03-11 | 2019-03-14 | 22 | 222.25d |
| 25 |  | Integración de acciones específicas sobre el desarrollo y mitigación de riesgos en el Plan de calidad | 0h | 2019-03-01 | 2019-03-01 | 23 | 224.93d |
| 26 |  | Documento de validación | 0h | 2019-03-14 | 2019-03-14 | 24 | 222.25d |
| 27 |  | Definición de la migración 30% | 47.45h | 2019-03-01 | 2019-03-12 | 23 | 219.68d |
| 28 |  | Documento de migración | 0h | 2019-03-12 | 2019-03-12 | 27 | 224.93d |
| 29 | 1.2 | **Fase de Diseño 15%** | 45.5d | 2019-03-06 | 2019-05-09 |  | 0d |
| 30 |  | Selección de técnicas 5% | 26.25h | 2019-03-06 | 2019-03-12 | 21 | 0d |
| 31 |  | Documento de métodos/técnicas | 0h | 2019-03-12 | 2019-03-12 | 30 | 224d |
| 32 |  | Diseño de la interfaz de usuario 30% | 157.5h | 2019-03-12 | 2019-04-10 | 30 | 0d |
| 33 |  | Prototipos | 0h | 2019-04-10 | 2019-04-10 | 32 | 203d |
| 34 |  | Interfaz HTML | 0h | 2019-04-10 | 2019-04-10 | 32 | 203d |
| 35 |  | Reglas de diseño - Calidad | 0h | 2019-04-10 | 2019-04-10 | 23, 30, 32 | 203d |
| 36 |  | Diseño de datos 25% | 131.25h | 2019-04-10 | 2019-05-03 | 32 | 0d |
| 37 |  | Diseño de la arquitectura 20% | 105h | 2019-04-10 | 2019-04-30 | 32 | 38.5d |
| 38 |  | Diagramas BD | 0h | 2019-05-03 | 2019-05-03 | 36 | 185.5d |
| 39 |  | Diagramas de arquitectura | 0h | 2019-04-30 | 2019-04-30 | 37 | 185.5d |
| 40 |  | Diseño de módulos 10% | 52.5h | 2019-04-30 | 2019-05-09 | 37 | 38.5d |
| 41 |  | Diseño de los circuitos de prueba 10% | 52.5h | 2019-04-30 | 2019-05-08 | 37 | 190.57d |
| 42 |  | Diagramas de interfaces | 0h | 2019-05-09 | 2019-05-09 | 40, 41 | 178.5d |
| 43 | 1.3 | **Fase de Implementación 35%** | 98d | 2019-05-03 | 2019-09-18 |  | 0d |
| 44 | 1.3.1 | **Módulo 1 60%** | 98d | 2019-05-03 | 2019-09-18 |  | 0d |
| 45 |  | Impl. Requisitos prioridad 1 40% | 294h | 2019-05-03 | 2019-06-28 | 36 | 0d |
| 46 |  | Modelo funcional 1 | 0h | 2019-06-28 | 2019-06-28 | 45 | 142.8d |
| 47 |  | Impl. Requisitos prioridad 2 30% | 220.5h | 2019-06-28 | 2019-08-08 | 45 | 0d |
| 48 |  | Modelo funcional 2 | 0h | 2019-08-08 | 2019-08-08 | 47 | 113.4d |
| 49 |  | Impl. Requisitos prioridad 3 20% | 147h | 2019-08-08 | 2019-09-05 | 47 | 0d |
| 50 |  | Modelo funcional 3 | 0h | 2019-09-05 | 2019-09-05 | 49 | 93.8d |
| 51 |  | Impl. Requisitos prioridad 4 10% | 73.5h | 2019-09-05 | 2019-09-18 | 49 | 0d |
| 52 |  | Modelo funcional 4 | 0h | 2019-09-18 | 2019-09-18 | 51 | 84d |
| 53 | 1.3.2 | **Módulo 2 40%** | 65.33d | 2019-05-09 | 2019-08-08 |  | 38.5d |
| 54 |  | Impl. Requisitos prioridad 1 20% | 98h | 2019-05-09 | 2019-05-28 | 36, 37, 40 | 38.5d |
| 55 |  | Modelo funcional 1 | 0h | 2019-05-28 | 2019-05-28 | 54 | 165.43d |
| 56 |  | Impl. Requisitos prioridad 2 30% | 147h | 2019-05-28 | 2019-06-25 | 54 | 38.5d |
| 57 |  | Modelo funcional 2 | 0h | 2019-06-25 | 2019-06-25 | 56 | 145.83d |
| 58 |  | Impl. Requisitos prioridad 3 50% | 245h | 2019-06-25 | 2019-08-08 | 56 | 38.5d |
| 59 |  | Modelo funcional 3 | 0h | 2019-08-08 | 2019-08-08 | 58 | 113.17d |
| 60 | 1.4 | **Fase de Test 20%** | 94.5d | 2019-08-08 | 2019-12-19 |  | 18.67d |
| 61 |  | Pruebas unitarias Módulo 1 40% | 280h | 2019-09-18 | 2019-11-11 | 51 | 0d |
| 62 |  | Checklist PU M1 | 0h | 2019-11-11 | 2019-11-11 | 61 | 46.67d |
| 63 |  | Pruebas unitarias Módulo 2 30% | 210h | 2019-08-08 | 2019-09-17 | 58 | 38.5d |
| 64 |  | Checklist PU M2 | 0h | 2019-09-17 | 2019-09-17 | 63 | 85.17d |
| 65 |  | Pruebas integración SW 10% | 70h | 2019-11-11 | 2019-11-22 | 61, 63 | 0d |
| 66 |  | Checklist integración | 0h | 2019-11-22 | 2019-11-22 | 65 | 37.33d |
| 67 |  | Pruebas arquitectura 20% | 140h | 2019-11-22 | 2019-12-19 | 65 | 0d |
| 68 |  | Documentación pruebas arquitectura | 0h | 2019-12-19 | 2019-12-19 | 67 | 18.67d |
| 69 | 1.5 | **Fase de Implantación 5%** | 18.67d | 2019-12-19 | 2020-01-14 |  | 0d |
| 70 |  | Pruebas implantación 60% | 105h | 2019-12-19 | 2020-01-08 | 67 | 0d |

| ID | Task | Duration | Start | Finish | Predecessors | Total float |
| --- | --- | --- | --- | --- | --- | --- |
| 71 | Documentación pruebas implantación | 0h | 2020-01-08 | 2020-01-08 | 70 | 4.67d |
| 72 | Migración del sistema 15% | 26.25h | 2020-01-08 | 2020-01-13 | 27, 70 | 0d |
| 73 | Dossier de migración | 0h | 2020-01-13 | 2020-01-13 | 72 | 1.17d |
| 74 | Pruebas de integridad de datos cliente 5% | 8.75h | 2020-01-13 | 2020-01-14 | 72 | 0d |
| 75 | Checklist PIDC | 0h | 2020-01-14 | 2020-01-14 | 74 | 0d |
| 76 | Formaciones 20% | 35h | 2019-12-23 | 2019-12-27 | 70SS+2d | 12d |

## Version 2 (saved 2018-05-21, file Segundo Boletin RH.mpp)

Last finish stays 2020-01-14.

Changed:

| ID | Task | Finish | Total float | Other |
| --- | --- | --- | --- | --- |
| 2 | **Proyecto** |  |  | resources none → Licencias; Ordenadores |
| 5 | Inputs cliente/usuarios 10% |  |  | resources none → Analistas2 |
| 6 | Observación sistema actual 20% |  |  | resources none → Team Leader |
| 7 | Resumen actas reuniones y dossier de observaciones |  | 273.38d → 264.63d | resources none → Team Leader |
| 8 | Negociación 30% |  |  | resources none → Team Leader |
| 9 | Documento de visión |  | 267.08d → 258.33d | resources none → Team Leader |
| 10 | Determinación de RF y RNF 30% |  |  | resources none → Team Leader |
| 11 | Documento de alcance |  | 260.78d → 252.03d | resources none → Analistas2 |
| 12 | Priorización de objetivos 10% |  |  | resources none → Analistas2 |
| 13 | Lista priorizada de R |  | 253.43d → 249.93d | resources none → Team Leader |
| 15 | Identificación RF y RNF 40% |  |  | resources none → Team Leader |
| 16 | Priorización RF 15% |  | 243.28d → 234.53d | resources none → Analistas2 |
| 17 | Análisis arquitectura 15% |  |  | resources none → Analistas2 |
| 18 | Realización de diagramas 30% |  |  | resources none → Team Leader |
| 19 | Modelos y diagramas de análisis |  | 233.83d → 230.33d | resources none → Analistas2 |
| 21 | Definición de la validación RF 30% |  |  | resources none → Team Leader |
| 22 | Definición de la integración 10% |  | 222.25d → 218.75d | resources none → Analistas2 |
| 23 | Definición de medidas de aseguramiento de la calidad 15% |  | 224.93d → 216.18d | resources none → Analistas2 |
| 24 | Definición de la validación de la arquitectura 15% |  | 222.25d → 218.75d | resources none → Arquitecto de sistemas |
| 25 | Integración de acciones específicas sobre el desarrollo y mitigación de riesgos en el Plan de calidad |  | 224.93d → 227.18d | resources none → Desarrolador1 |
| 26 | Documento de validación |  | 222.25d → 218.75d | resources none → Analistas2 |
| 27 | Definición de la migración 30% |  | 219.68d → 216.18d | resources none → Desarrolladores2 |
| 28 | Documento de migración |  | 224.93d → 220.85d | resources none → Analistas2 |
| 30 | Selección de técnicas 5% |  |  | resources none → Diseñador |
| 31 | Documento de métodos/técnicas |  | 224d → 220.5d | resources none → Arquitecto de sistemas |
| 32 | Diseño de la interfaz de usuario 30% |  |  | resources none → Diseñador |
| 33 | Prototipos |  | 203d → 199.5d | resources none → Diseñador |
| 34 | Interfaz HTML |  | 203d → 199.5d | resources none → Diseñador |
| 35 | Reglas de diseño - Calidad |  | 203d → 199.5d | resources none → Diseñador |
| 36 | Diseño de datos 25% |  |  | resources none → Diseñador |
| 37 | Diseño de la arquitectura 20% |  |  | resources none → Arquitecto de sistemas |
| 38 | Diagramas BD |  | 185.5d → 182d | resources none → Arquitecto de sistemas |
| 39 | Diagramas de arquitectura |  |  | resources none → Arquitecto de sistemas |
| 40 | Diseño de módulos 10% |  |  | resources none → Desarrolladores2 |
| 41 | Diseño de los circuitos de prueba 10% | 2019-05-08 → 2019-05-09 (+1d) | 190.57d → 190.1d | resources none → Desarrolador1 |
| 42 | Diagramas de interfaces |  |  | resources none → Diseñador |
| 45 | Impl. Requisitos prioridad 1 40% |  |  | resources none → Desarrolladores2 |
| 46 | Modelo funcional 1 |  |  | resources none → Arquitecto de sistemas |
| 47 | Impl. Requisitos prioridad 2 30% |  |  | resources none → Desarrolador1 |
| 48 | Modelo funcional 2 |  |  | resources none → Desarrolladores2 |
| 49 | Impl. Requisitos prioridad 3 20% |  |  | resources none → Arquitecto de sistemas |
| 50 | Modelo funcional 3 |  |  | resources none → Arquitecto de sistemas |
| 51 | Impl. Requisitos prioridad 4 10% |  |  | resources none → Desarrolladores2 |
| 52 | Modelo funcional 4 |  |  | resources none → Desarrolladores2 |
| 54 | Impl. Requisitos prioridad 1 20% |  |  | resources none → Desarrolador1 |
| 55 | Modelo funcional 1 |  |  | resources none → Arquitecto de sistemas |
| 56 | Impl. Requisitos prioridad 2 30% |  |  | resources none → Arquitecto de sistemas |
| 57 | Modelo funcional 2 |  |  | resources none → Desarrolladores2 |
| 58 | Impl. Requisitos prioridad 3 50% |  |  | resources none → Desarrolladores2 |
| 59 | Modelo funcional 3 |  |  | resources none → Desarrolador1 |
| 61 | Pruebas unitarias Módulo 1 40% |  |  | resources none → Desarrolador1 |
| 62 | Checklist PU M1 |  |  | resources none → Arquitecto de sistemas |
| 63 | Pruebas unitarias Módulo 2 30% |  |  | resources none → Desarrolladores2 |
| 64 | Checklist PU M2 |  |  | resources none → Arquitecto de sistemas |
| 65 | Pruebas integración SW 10% |  |  | resources none → Arquitecto de sistemas |
| 66 | Checklist integración |  |  | resources none → Arquitecto de sistemas |
| 67 | Pruebas arquitectura 20% |  |  | resources none → Arquitecto de sistemas |
| 68 | Documentación pruebas arquitectura |  |  | resources none → Arquitecto de sistemas |
| 70 | Pruebas implantación 60% |  |  | resources none → Desarrolador1 |
| 71 | Documentación pruebas implantación |  |  | resources none → Desarrolladores2 |
| 72 | Migración del sistema 15% |  |  | resources none → Arquitecto de sistemas |
| 73 | Dossier de migración |  |  | resources none → Arquitecto de sistemas |
| 74 | Pruebas de integridad de datos cliente 5% |  |  | resources none → Team Leader |
| 75 | Checklist PIDC |  |  | resources none → Arquitecto de sistemas |
| 76 | Formaciones 20% |  |  | resources none → Analistas2 |

## Version 3 (saved 2018-05-28, file Segundo Boletin LB.mpp)

Last finish stays 2020-01-14. Complete tasks 0 → 22.

Changed:

| ID | Task | Start | Finish | Complete | Total float | Other |
| --- | --- | --- | --- | --- | --- | --- |
| 1 | **WBS Element** | 2019-01-01 A |  | 0% → 28% |  | baseline start none → 2019-01-01; baseline finish none → 2020-01-14 |
| 2 | **Proyecto** | 2019-01-01 A |  | 0% → 28% |  | baseline start none → 2019-01-01; baseline finish none → 2020-01-14 |
| 3 | **Fase de Análisis 15%** | 2019-01-01 A | 2019-03-14 A | 0% → 100% | 0d → none | baseline start none → 2019-01-01; baseline finish none → 2019-03-14 |
| 4 | **Elicitación 30%** | 2019-01-01 A | 2019-01-29 A | 0% → 100% | 0d → none | baseline start none → 2019-01-01; baseline finish none → 2019-01-29 |
| 5 | Inputs cliente/usuarios 10% | 2019-01-01 A | 2019-01-03 A | 0% → 100% | 0d → none | baseline start none → 2019-01-01; baseline finish none → 2019-01-03 |
| 6 | Observación sistema actual 20% | 2019-01-03 A | 2019-01-09 A | 0% → 100% | 0d → none | baseline start none → 2019-01-03; baseline finish none → 2019-01-09 |
| 7 | Resumen actas reuniones y dossier de observaciones | 2019-01-09 A | 2019-01-09 A | 0% → 100% | 264.63d → none | baseline start none → 2019-01-09; baseline finish none → 2019-01-09 |
| 8 | Negociación 30% | 2019-01-09 A | 2019-01-17 A | 0% → 100% | 0d → none | baseline start none → 2019-01-09; baseline finish none → 2019-01-17 |
| 9 | Documento de visión | 2019-01-17 A | 2019-01-17 A | 0% → 100% | 258.33d → none | baseline start none → 2019-01-17; baseline finish none → 2019-01-17 |
| 10 | Determinación de RF y RNF 30% | 2019-01-17 A | 2019-01-25 A | 0% → 100% | 0d → none | baseline start none → 2019-01-17; baseline finish none → 2019-01-25 |
| 11 | Documento de alcance | 2019-01-25 A | 2019-01-25 A | 0% → 100% | 252.03d → none | baseline start none → 2019-01-25; baseline finish none → 2019-01-25 |
| 12 | Priorización de objetivos 10% | 2019-01-25 A | 2019-01-29 A | 0% → 100% | 0d → none | baseline start none → 2019-01-25; baseline finish none → 2019-01-29 |
| 13 | Lista priorizada de R | 2019-01-29 A | 2019-01-29 A | 0% → 100% | 249.93d → none | baseline start none → 2019-01-29; baseline finish none → 2019-01-29 |
| 14 | **Análisis 40%** | 2019-01-30 A | 2019-02-26 A | 0% → 100% | 0d → none | baseline start none → 2019-01-30; baseline finish none → 2019-02-26 |
| 15 | Identificación RF y RNF 40% | 2019-01-30 A | 2019-02-14 A | 0% → 100% | 0d → none | baseline start none → 2019-01-30; baseline finish none → 2019-02-14 |
| 16 | Priorización RF 15% | 2019-02-14 A | 2019-02-20 A | 0% → 100% | 234.53d → none | baseline start none → 2019-02-14; baseline finish none → 2019-02-20 |
| 17 | Análisis arquitectura 15% | 2019-02-08 A | 2019-02-14 A | 0% → 100% | 0d → none | baseline start none → 2019-02-08; baseline finish none → 2019-02-14 |
| 18 | Realización de diagramas 30% | 2019-02-14 A | 2019-02-26 A | 0% → 100% | 0d → none | baseline start none → 2019-02-14; baseline finish none → 2019-02-26 |
| 19 | Modelos y diagramas de análisis | 2019-02-26 A | 2019-02-26 A | 0% → 100% | 230.33d → none | baseline start none → 2019-02-26; baseline finish none → 2019-02-26 |
| 20 | **Validación 30%** | 2019-02-26 A | 2019-03-14 A | 0% → 100% | 0d → none | baseline start none → 2019-02-26; baseline finish none → 2019-03-14 |
| 21 | Definición de la validación RF 30% | 2019-02-26 A | 2019-03-06 A | 0% → 100% | 0d → none | baseline start none → 2019-02-26; baseline finish none → 2019-03-06 |
| 22 | Definición de la integración 10% | 2019-03-06 A | 2019-03-11 A | 0% → 100% | 218.75d → none | baseline start none → 2019-03-06; baseline finish none → 2019-03-11 |
| 23 | Definición de medidas de aseguramiento de la calidad 15% | 2019-02-26 A | 2019-03-01 A | 0% → 100% | 216.18d → none | baseline start none → 2019-02-26; baseline finish none → 2019-03-01 |
| 24 | Definición de la validación de la arquitectura 15% | 2019-03-11 A | 2019-03-14 A | 0% → 100% | 218.75d → none | baseline start none → 2019-03-11; baseline finish none → 2019-03-14 |
| 25 | Integración de acciones específicas sobre el desarrollo y mitigación de riesgos en el Plan de calidad | 2019-03-01 A | 2019-03-01 A | 0% → 100% | 227.18d → none | baseline start none → 2019-03-01; baseline finish none → 2019-03-01 |
| 26 | Documento de validación | 2019-03-14 A | 2019-03-14 A | 0% → 100% | 218.75d → none | baseline start none → 2019-03-14; baseline finish none → 2019-03-14 |
| 27 | Definición de la migración 30% | 2019-03-01 A | 2019-03-12 A | 0% → 100% | 216.18d → none | baseline start none → 2019-03-01; baseline finish none → 2019-03-12 |
| 28 | Documento de migración | 2019-03-12 A | 2019-03-12 A | 0% → 100% | 220.85d → none | baseline start none → 2019-03-12; baseline finish none → 2019-03-12 |
| 29 | **Fase de Diseño 15%** | 2019-03-06 A |  | 0% → 67% | 0d → 178.5d | baseline start none → 2019-03-06; baseline finish none → 2019-05-09 |
| 30 | Selección de técnicas 5% | 2019-03-06 A |  | 0% → 75% | 0d → 15.75d | baseline start none → 2019-03-06; baseline finish none → 2019-03-12 |
| 31 | Documento de métodos/técnicas |  |  |  |  | baseline start none → 2019-03-12; baseline finish none → 2019-03-12 |
| 32 | Diseño de la interfaz de usuario 30% | 2019-03-12 A |  | 0% → 75% | 0d → 10.5d | baseline start none → 2019-03-12; baseline finish none → 2019-04-10 |
| 33 | Prototipos |  |  |  |  | baseline start none → 2019-04-10; baseline finish none → 2019-04-10 |
| 34 | Interfaz HTML |  |  |  |  | baseline start none → 2019-04-10; baseline finish none → 2019-04-10 |
| 35 | Reglas de diseño - Calidad |  |  |  |  | baseline start none → 2019-04-10; baseline finish none → 2019-04-10 |
| 36 | Diseño de datos 25% | 2019-04-10 A |  | 0% → 75% |  | baseline start none → 2019-04-10; baseline finish none → 2019-05-03 |
| 37 | Diseño de la arquitectura 20% | 2019-04-10 A |  | 0% → 75% | 38.5d → 5.25d | baseline start none → 2019-04-10; baseline finish none → 2019-04-30 |
| 38 | Diagramas BD |  |  |  |  | baseline start none → 2019-05-03; baseline finish none → 2019-05-03 |
| 39 | Diagramas de arquitectura |  |  |  |  | baseline start none → 2019-04-30; baseline finish none → 2019-04-30 |
| 40 | Diseño de módulos 10% | 2019-04-30 A |  | 0% → 75% |  | baseline start none → 2019-04-30; baseline finish none → 2019-05-09 |
| 41 | Diseño de los circuitos de prueba 10% |  |  |  |  | baseline start none → 2019-04-30; baseline finish none → 2019-05-09 |
| 42 | Diagramas de interfaces |  |  |  |  | baseline start none → 2019-05-09; baseline finish none → 2019-05-09 |
| 43 | **Fase de Implementación 35%** |  |  |  |  | baseline start none → 2019-05-03; baseline finish none → 2019-09-18 |
| 44 | **Módulo 1 60%** |  |  |  |  | baseline start none → 2019-05-03; baseline finish none → 2019-09-18 |
| 45 | Impl. Requisitos prioridad 1 40% |  |  |  |  | baseline start none → 2019-05-03; baseline finish none → 2019-06-28 |
| 46 | Modelo funcional 1 |  |  |  |  | baseline start none → 2019-06-28; baseline finish none → 2019-06-28 |
| 47 | Impl. Requisitos prioridad 2 30% |  |  |  |  | baseline start none → 2019-06-28; baseline finish none → 2019-08-08 |
| 48 | Modelo funcional 2 |  |  |  |  | baseline start none → 2019-08-08; baseline finish none → 2019-08-08 |
| 49 | Impl. Requisitos prioridad 3 20% |  |  |  |  | baseline start none → 2019-08-08; baseline finish none → 2019-09-05 |
| 50 | Modelo funcional 3 |  |  |  |  | baseline start none → 2019-09-05; baseline finish none → 2019-09-05 |
| 51 | Impl. Requisitos prioridad 4 10% |  |  |  |  | baseline start none → 2019-09-05; baseline finish none → 2019-09-18 |
| 52 | Modelo funcional 4 |  |  |  |  | baseline start none → 2019-09-18; baseline finish none → 2019-09-18 |
| 53 | **Módulo 2 40%** |  |  |  |  | baseline start none → 2019-05-09; baseline finish none → 2019-08-08 |
| 54 | Impl. Requisitos prioridad 1 20% |  |  |  |  | baseline start none → 2019-05-09; baseline finish none → 2019-05-28 |
| 55 | Modelo funcional 1 |  |  |  |  | baseline start none → 2019-05-28; baseline finish none → 2019-05-28 |
| 56 | Impl. Requisitos prioridad 2 30% |  |  |  |  | baseline start none → 2019-05-28; baseline finish none → 2019-06-25 |
| 57 | Modelo funcional 2 |  |  |  |  | baseline start none → 2019-06-25; baseline finish none → 2019-06-25 |
| 58 | Impl. Requisitos prioridad 3 50% |  |  |  |  | baseline start none → 2019-06-25; baseline finish none → 2019-08-08 |
| 59 | Modelo funcional 3 |  |  |  |  | baseline start none → 2019-08-08; baseline finish none → 2019-08-08 |
| 60 | **Fase de Test 20%** |  |  |  |  | baseline start none → 2019-08-08; baseline finish none → 2019-12-19 |
| 61 | Pruebas unitarias Módulo 1 40% |  |  |  |  | baseline start none → 2019-09-18; baseline finish none → 2019-11-11 |
| 62 | Checklist PU M1 |  |  |  |  | baseline start none → 2019-11-11; baseline finish none → 2019-11-11 |
| 63 | Pruebas unitarias Módulo 2 30% |  |  |  |  | baseline start none → 2019-08-08; baseline finish none → 2019-09-17 |
| 64 | Checklist PU M2 |  |  |  |  | baseline start none → 2019-09-17; baseline finish none → 2019-09-17 |
| 65 | Pruebas integración SW 10% |  |  |  |  | baseline start none → 2019-11-11; baseline finish none → 2019-11-22 |
| 66 | Checklist integración |  |  |  |  | baseline start none → 2019-11-22; baseline finish none → 2019-11-22 |
| 67 | Pruebas arquitectura 20% |  |  |  |  | baseline start none → 2019-11-22; baseline finish none → 2019-12-19 |
| 68 | Documentación pruebas arquitectura |  |  |  |  | baseline start none → 2019-12-19; baseline finish none → 2019-12-19 |
| 69 | **Fase de Implantación 5%** |  |  |  |  | baseline start none → 2019-12-19; baseline finish none → 2020-01-14 |
| 70 | Pruebas implantación 60% |  |  |  |  | baseline start none → 2019-12-19; baseline finish none → 2020-01-08 |

| ID | Task | Other |
| --- | --- | --- |
| 71 | Documentación pruebas implantación | baseline start none → 2020-01-08; baseline finish none → 2020-01-08 |
| 72 | Migración del sistema 15% | baseline start none → 2020-01-08; baseline finish none → 2020-01-13 |
| 73 | Dossier de migración | baseline start none → 2020-01-13; baseline finish none → 2020-01-13 |
| 74 | Pruebas de integridad de datos cliente 5% | baseline start none → 2020-01-13; baseline finish none → 2020-01-14 |
| 75 | Checklist PIDC | baseline start none → 2020-01-14; baseline finish none → 2020-01-14 |
| 76 | Formaciones 20% | baseline start none → 2019-12-23; baseline finish none → 2019-12-27 |
